# Cronograma

Schedule from MS Project, 2009-02-28 to 2009-05-30, A marks actual dates.
Fóton Informática S. A.

## Calendars

- Padrão: Mon-Fri 19:00-23:30; Sat-Sun 10:00-12:00, 14:00-23:30. Exceptions (off unless hours are given): 2009-04-10 to 2009-04-12 (Feriado), 2009-04-18 to 2009-04-21 (Feriado2), 2009-05-01 to 2009-05-03 (Feriado3).

## Resources

| Resource |
| --- |
| Leandro de Barros |
| Carlos Henrique |
| Laurindo Souza |

## Schedule

| ID | WBS | Task | Duration | Start | Finish | Predecessors | Complete | Remaining | Total slack | Free slack | Constraint |
| --- | --- | --- | --- | --- | --- | --- | --- | --- | --- | --- | --- |
| 1 | 1 | Pré-Projeto | 6.44d | 2009-02-28 A | 2009-03-07 A |  | 100% |  |  |  | start no earlier than 2009-02-28 |
| 2 | 2 | **Trabalho Escrito** | 57.38d? | 2009-03-07 A | 2009-05-30 | 1 | 75% | 14.32d? | 0d |  |  |
| 3 | 2.1 | **Introdução** | 5.69d | 2009-03-07 A | 2009-03-14 |  | 95% | 0.28d | 51.69d |  |  |
| 4 | 2.1.1 | Motivação | 3d | 2009-03-07 A | 2009-03-10 A |  | 100% |  |  |  | start no earlier than 2009-03-07 |
| 5 | 2.1.2 | Justificativa do Tema | 3d | 2009-03-07 A | 2009-03-10 A |  | 100% |  |  |  |  |
| 6 | 2.1.3 | Relevância | 3d | 2009-03-07 A | 2009-03-10 A |  | 100% |  |  |  |  |
| 7 | 2.1.4 | Objetivos do Sistema | 3d | 2009-03-07 A | 2009-03-10 A |  | 100% |  |  |  |  |
| 8 | 2.1.5 | Geral (marco do projeto) | 3d | 2009-03-07 A | 2009-03-10 A |  | 100% |  |  |  |  |
| 9 | 2.1.6 | Específicos (metas para se atingir o objetivo geral) | 3d | 2009-03-07 A | 2009-03-10 A |  | 100% |  |  |  |  |
| 10 | 2.1.7 | Análise Institucional | 3d | 2009-03-07 A | 2009-03-10 A |  | 100% |  |  |  |  |
| 11 | 2.1.8 | A empresa e seu negócio | 3d | 2009-03-07 A | 2009-03-10 A |  | 100% |  |  |  |  |
| 12 | 2.1.9 | Usuário principal | 4d | 2009-03-07 A | 2009-03-12 |  | 93% | 0.28d | 53.38d |  |  |
| 13 | 2.1.10 | Organograma da empresa | 4d | 2009-03-07 A | 2009-03-12 |  | 93% | 0.28d | 53.38d |  |  |
| 14 | 2.1.11 | A área de negócios contextualizada | 4d | 2009-03-07 A | 2009-03-12 |  | 93% | 0.28d | 53.38d |  |  |
| 15 | 2.1.12 | Descrição do restante do Trabalho | 1d | 2009-03-13 | 2009-03-14 |  |  |  | 51.12d | 0d | finish no earlier than 2009-03-14 |
| 16 | 2.2 | Embasamento Teórico | 5.69d? | 2009-03-14 A | 2009-03-21 | 15 | 90% | 0.57d? | 46d |  | finish no earlier than 2009-03-21 |
| 17 | 2.3 | **Análise Funcional** | 5.69d | 2009-03-21 A | 2009-03-28 A | 16 | 100% |  |  |  |  |
| 18 | 2.3.1 | Análise das necessidades e problemas diagnosticados | 1d | 2009-03-21 A | 2009-03-22 A |  | 100% |  |  |  |  |
| 19 | 2.3.2 | Proposta de solução | 2d | 2009-03-21 A | 2009-03-22 A |  | 100% |  |  |  |  |
| 20 | 2.3.3 | Benefícios esperados | 3d | 2009-03-21 A | 2009-03-24 A |  | 100% |  |  |  |  |
| 21 | 2.3.4 | Análise de Riscos (opcional) | 3d | 2009-03-24 A | 2009-03-28 A |  | 100% |  |  |  | finish no earlier than 2009-03-28 |
| 22 | 2.4 | **Abrangência do Sistema** | 5.69d | 2009-03-28 A | 2009-04-04 A | 21 | 100% |  |  |  |  |
| 23 | 2.4.1 | Possibilidade de implantação em outras Empresas; | 3d | 2009-03-28 A | 2009-03-31 A |  | 100% |  |  |  |  |
| 24 | 2.4.2 | Não abrangência – são as restrições d trabalho (o que o sistema não irá abranger); | 3d | 2009-03-28 A | 2009-03-31 A |  | 100% |  |  |  |  |
| 25 | 2.4.3 | Ambiente Tecnológico Atual (se existir) | 3d | 2009-03-28 A | 2009-03-31 A |  | 100% |  |  |  |  |
| 26 | 2.4.4 | Ambiente Tecnológico Proposto | 4d | 2009-03-28 A | 2009-04-02 A |  | 100% |  |  |  |  |
| 27 | 2.4.5 | Ambiente Físico Atual - salas, CPD, estrutura física | 4d | 2009-03-28 A | 2009-04-02 A |  | 100% |  |  |  |  |
| 28 | 2.4.6 | Ambiente Físico Proposto - salas, CPD, estrutura física | 4d | 2009-03-28 A | 2009-04-02 A |  | 100% |  |  |  |  |
| 29 | 2.4.7 | Cronograma para a realização do projeto | 3d | 2009-03-31 A | 2009-04-04 A |  | 100% |  |  |  | finish no earlier than 2009-04-04 |

| ID | WBS | Task | Duration | Start | Finish | Complete | Remaining | Total slack | Constraint |
| --- | --- | --- | --- | --- | --- | --- | --- | --- | --- |
| 30 | 2.5 | **Projetos Lógico e Físico** | 23.5d? | 2009-03-07 A | 2009-04-05 | 82% | 4.13d? | 33.88d |  |
| 31 | 2.5.1 | **Requisitos do usuário** | 23.5d? | 2009-03-07 A | 2009-04-05 | 82% | 4.13d? | 33.88d |  |
| 32 | 2.5.1.1 | Requisitos Funcionais | 15.75d? | 2009-03-07 A | 2009-03-27 | 90% | 1.57d? | 41.62d | finish no earlier than 2009-03-27 |
| 33 | 2.5.1.2 | Requisitos Não-Funcionais | 16.5d? | 2009-03-07 A | 2009-03-28 | 80% | 3.3d? | 40.88d | start no earlier than 2009-03-07 |
| 34 | 2.5.1.3 | **Requisitos Suplementares** | 23.5d? | 2009-03-07 A | 2009-04-05 | 80% | 4.7d? | 33.88d |  |
| 35 | 2.5.1.3.1 | Requisitos de Integridade | 1d? | 2009-03-07 A | 2009-03-08 A | 100% |  |  |  |
| 36 | 2.5.1.3.2 | Requisitos de Segurança | 1d? | 2009-03-07 A | 2009-03-08 A | 100% |  |  |  |
| 37 | 2.5.1.3.3 | Requisitos de Desempenho | 1d? | 2009-03-07 A | 2009-03-08 A | 100% |  |  |  |
| 38 | 2.5.1.3.4 | Requisitos de Usabilidade | 1d? | 2009-03-07 A | 2009-03-08 A | 100% |  |  |  |
| 39 | 2.5.1.3.5 | Requisitos de interface externa | 1d? | 2009-03-07 A | 2009-03-08 A | 100% |  |  |  |
| 40 | 2.5.1.3.6 | Requisitos de interface com ambiente de hardware | 1d? | 2009-03-07 A | 2009-03-08 A | 100% |  |  |  |
| 41 | 2.5.1.3.7 | Requisitos de interface com ambiente de software | 1d? | 2009-03-07 A | 2009-03-08 A | 100% |  |  |  |
| 42 | 2.5.1.3.8 | Requisitos de execução | 1d? | 2009-03-07 A | 2009-03-08 A | 100% |  |  |  |
| 43 | 2.5.1.3.9 | Requisitos genéricos | 1d? | 2009-03-07 A | 2009-03-08 A | 100% |  |  |  |
| 44 | 2.5.1.3.10 | Requisitos inversos (se necessário) | 23.5d? | 2009-03-07 A | 2009-04-05 | 72% | 6.5d? | 33.88d | start no earlier than 2009-03-07 |
| 45 | 2.6 | **Modelagem Funcional** | 1d? | 2009-03-07 | 2009-03-08 |  |  | 56.38d |  |
| 46 | 2.6.1 | Diagramas de Casos de Uso | 1d? | 2009-03-07 | 2009-03-08 |  |  | 56.38d |  |
| 47 | 2.6.2 | Diagramas de Classe de Alto Nível Relativos aos Casos de Uso | 1d? | 2009-03-07 | 2009-03-08 |  |  | 56.38d |  |
| 48 | 2.6.3 | Modelo Entidade-Relacionamento (MER) | 1d? | 2009-03-07 | 2009-03-08 |  |  | 56.38d |  |
| 49 | 2.7 | **Modelagem Lógica / Física** | 1d? | 2009-03-07 | 2009-03-08 |  |  | 56.38d |  |
| 50 | 2.7.1 | **Diagrama de Classes, detalhando atributos e operações** | 1d? | 2009-03-07 | 2009-03-08 |  |  | 56.38d |  |
| 51 | 2.7.1.1 | Classes de Dados - entity | 1d? | 2009-03-07 | 2009-03-08 |  |  | 56.38d |  |
| 52 | 2.7.1.2 | Classes de Interface - boundary | 1d? | 2009-03-07 | 2009-03-08 |  |  | 56.38d |  |
| 53 | 2.7.1.3 | Classes de controle - control | 1d? | 2009-03-07 | 2009-03-08 |  |  | 56.38d |  |
| 54 | 2.7.2 | Diagrama de Atividades | 1d? | 2009-03-07 | 2009-03-08 |  |  | 56.38d |  |
| 55 | 2.7.3 | Diagrama de Seqüência | 1d? | 2009-03-07 | 2009-03-08 |  |  | 56.38d |  |
| 56 | 2.7.4 | Diagrama de Colaboração, quando necessário | 1d? | 2009-03-07 | 2009-03-08 |  |  | 56.38d |  |
| 57 | 2.7.5 | Diagrama de Estados | 1d? | 2009-03-07 | 2009-03-08 |  |  | 56.38d |  |

| ID | WBS | Task | Duration | Start | Finish | Complete | Remaining | Total slack | Constraint |
| --- | --- | --- | --- | --- | --- | --- | --- | --- | --- |
| 58 | 2.8 | **Implementação Física** | 1d? | 2009-03-07 | 2009-03-08 |  |  | 56.38d |  |
| 59 | 2.8.1 | Diagrama de Navegação Via Menus | 1d? | 2009-03-07 | 2009-03-08 |  |  | 56.38d |  |
| 60 | 2.8.2 | Descrição das Interfaces | 1d? | 2009-03-07 | 2009-03-08 |  |  | 56.38d |  |
| 61 | 2.8.3 | Dicionário de dados | 1d? | 2009-03-07 | 2009-03-08 |  |  | 56.38d |  |
| 62 | 2.8.4 | Descrição dos programas | 1d? | 2009-03-07 | 2009-03-08 |  |  | 56.38d |  |
| 63 | 2.9 | **Arquitetura Computacional** | 1d? | 2009-03-07 | 2009-03-08 |  |  | 56.38d |  |
| 64 | 2.9.1 | Diagrama de componentes | 1d? | 2009-03-07 | 2009-03-08 |  |  | 56.38d |  |
| 65 | 2.9.2 | Diagrama de execução | 1d? | 2009-03-07 | 2009-03-08 |  |  | 56.38d |  |
| 66 | 2.9.3 | Formas de armazenamento e disponibilização dos dados | 1d? | 2009-03-07 | 2009-03-08 |  |  | 56.38d |  |
| 67 | 2.9.4 | Diagrama da Rede | 1d? | 2009-03-07 | 2009-03-08 |  |  | 56.38d |  |
| 68 | 2.9.5 | Softwares Básicos e de Apoio Utilizados | 1d? | 2009-03-07 | 2009-03-08 |  |  | 56.38d |  |
| 69 | 2.9.6 | Detalhamento dos hardwares necessários | 1d? | 2009-03-07 | 2009-03-08 |  |  | 56.38d |  |
| 70 | 2.10 | **Segurança** | 1d? | 2009-03-07 | 2009-03-08 |  |  | 56.38d |  |
| 71 | 2.10.1 | Mecanismos de Segurança e Privacidade de Dados | 1d? | 2009-03-07 | 2009-03-08 |  |  | 56.38d |  |
| 72 | 2.10.2 | Mecanismos de Segurança de Equipamentos e Instalações | 1d? | 2009-03-07 | 2009-03-08 |  |  | 56.38d |  |
| 73 | 2.11 | **Projetos Futuros** | 1d? | 2009-03-07 | 2009-03-08 |  |  | 56.38d |  |
| 74 | 2.11.1 | Perspectivas futuras de negócios | 1d? | 2009-03-07 | 2009-03-08 |  |  | 56.38d |  |
| 75 | 2.11.2 | Perspectivas futuras de tecnologia | 1d? | 2009-03-07 | 2009-03-08 |  |  | 56.38d |  |
| 76 | 2.12 | Conclusão | 1d? | 2009-03-07 | 2009-03-08 |  |  | 56.38d |  |
| 77 | 2.13 | Referências Bibliográficas | 1d? | 2009-03-07 A | 2009-03-08 | 50% | 0.5d? | 56.38d |  |
| 78 | 2.14 | Glossário | 1d? | 2009-03-07 | 2009-03-08 |  |  | 56.38d |  |
| 79 | 2.15 | Anexos | 1d? | 2009-03-07 | 2009-03-08 |  |  | 56.38d |  |
| 80 | 2.16 | Apêndices | 1d? | 2009-05-29 | 2009-05-30 |  |  | 0d | finish no earlier than 2009-05-30 |
| 81 | 3 | Implementação | 41.06d? | 2009-03-28 | 2009-05-30 |  |  | 0d | finish no earlier than 2009-05-30 |
